# Project v1

Schedule from MS Project, 2017-12-07 to 2018-04-02.

## Calendars

- Prisma Scoring Services: Mon-Fri 09:00-13:00, 15:00-19:00; Sat-Sun off. Exceptions (off unless hours are given): 2018-01-01 to 2018-01-02 (Año nuevo), 2018-02-12 to 2018-02-13 (Carnaval), 2018-03-29 to 2018-03-30 (Semana santa).

## Schedule

| ID | WBS | Task | Type | Duration | Start | Finish | Predecessors | Total slack | Free slack | Constraint | Text11 | Text10 |
| --- | --- | --- | --- | --- | --- | --- | --- | --- | --- | --- | --- | --- |
| 1 | 1 | Definir diferentes clases para usar en el modelo | manual | 3d | 2017-12-07 | 2017-12-11 |  |  |  |  |  |  |
| 2 | 2 | **Scoring Services Prisma** |  | 57d | 2017-12-26 | 2018-03-20 |  | 7d |  |  |  |  |
| 3 | 2.1 | **Definición de arquitectura del sistema** |  | 2d | 2017-12-26 | 2017-12-27 |  | 7d |  |  |  |  |
| 4 | 2.1.1 | Flujo de trabajo o procesos, hacer diagrama |  | 1d | 2017-12-26 | 2017-12-26 |  | 7d | 0d | start no earlier than 2017-12-26 |  |  |
| 5 | 2.1.2 | Actores involucrados (roles y comunicación) |  | 1d | 2017-12-27 | 2017-12-27 | 4 | 55d |  |  |  |  |
| 6 | 2.1.3 | Definir periodicidad aproximada de 1) generación de score y 2) de recalibración |  | 1d | 2017-12-27 | 2017-12-27 | 4 | 7d | 0d |  |  |  |
| 7 | 2.2 | **Análisis exploratorio** |  | 5d | 2017-12-28 | 2018-01-05 |  | 7d |  |  | 1/2/3 |  |
| 8 | 2.2.1 | Analizar potenciales tablas a usar |  | 1d | 2017-12-28 | 2017-12-28 | 6 | 54d |  |  |  |  |
| 9 | 2.2.2 | Revisar la historia online de las tablas y posibilidad de levantar desde cinta |  | 1d | 2017-12-28 | 2017-12-28 | 6 | 54d |  |  |  |  |
| 10 | 2.2.3 | Pensar nuevas variables |  | 2d | 2017-12-28 | 2017-12-29 | 6 | 53d |  |  |  |  |
| 11 | 2.2.4 | Análisis descriptivo de variables |  | 5d | 2017-12-28 | 2018-01-05 | 6 | 7d | 0d |  |  |  |
| 12 | 2.3 | **Definición de la clase y número de modelos** |  | 2d | 2018-01-08 | 2018-01-09 |  | 7d |  |  |  |  |
| 13 | 2.3.1 | Reunirnos con VISA, definir clase y modelos |  | 1d | 2018-01-08 | 2018-01-08 | 11 | 49d |  |  |  |  |
| 14 | 2.3.2 | Definir cómo se va a comparar la performance de los modelos |  | 2d | 2018-01-08 | 2018-01-09 | 11 | 7d | 0d |  |  |  |
| 15 | 2.4 | **Desarrollos de Teradata - Iteración 1** |  | 5d | 2018-01-10 | 2018-01-16 |  | 7d |  |  |  | Creación de tablas/ ETL |
| 16 | 2.4.1 | Generar procesos que joinean tablas |  | 2d | 2018-01-10 | 2018-01-11 | 14 | 7d | 0d |  |  |  |
| 17 | 2.4.2 | Generar variables |  | 1d | 2018-01-12 | 2018-01-12 | 16 | 7d | 0d |  |  |  |
| 18 | 2.4.3 | Generar clase/s |  | 1d | 2018-01-15 | 2018-01-15 | 17 | 7d | 0d |  |  |  |
| 19 | 2.4.4 | export de archivo |  | 1d | 2018-01-16 | 2018-01-16 | 18 | 43d |  |  |  |  |
| 20 | 2.4.5 | (llevar export también a TD y a Hadoop) |  | 1d | 2018-01-16 | 2018-01-16 | 18 | 7d | 0d |  |  |  |
| 21 | 2.5 | **Desarrollo de Scripts R** |  | 5d | 2018-01-17 | 2018-01-23 |  | 7d |  |  |  | Ajuste de scripts |
| 22 | 2.5.1 | Revisar si el esquema de scripts es el adecuado |  | 1d | 2018-01-17 | 2018-01-17 | 20 | 7d | 0d |  |  |  |
| 23 | 2.5.2 | Agregar wallet |  | 1d | 2018-01-17 | 2018-01-17 | 20 | 7d | 0d |  |  |  |
| 24 | 2.5.3 | Agregar logs |  | 1d | 2018-01-18 | 2018-01-18 | 22, 23 | 7d | 0d |  |  |  |
| 25 | 2.5.4 | "Vaciar" todo y armar templates |  | 1d | 2018-01-18 | 2018-01-18 | 22, 23 | 7d | 0d |  |  |  |
| 26 | 2.5.5 | Reescribir |  | 3d | 2018-01-19 | 2018-01-23 | 24, 25 | 7d | 0d |  |  |  |

| ID | WBS | Task | Duration | Start | Finish | Predecessors | Total slack | Free slack |
| --- | --- | --- | --- | --- | --- | --- | --- | --- |
| 27 | 2.6 | **Prueba y exploración de modelos predictivos - Iteración 1** | 8d | 2018-01-24 | 2018-02-02 |  | 7d |  |
| 28 | 2.6.1 | Definir qué modelos se van a probar | 1d | 2018-01-24 | 2018-01-24 | 26 | 7d | 0d |
| 29 | 2.6.2 | Definir qué métricas se van a emplear para evaluar | 2d | 2018-01-25 | 2018-01-26 | 28 | 7d | 0d |
| 30 | 2.6.3 | Definir éxito o fracaso del modelo | 5d | 2018-01-29 | 2018-02-02 | 29 | 7d | 0d |
| 31 | 2.7 | **Desarrollos de Teradata - Iteración 2** | 5d | 2018-02-05 | 2018-02-09 |  | 7d |  |
| 32 | 2.7.1 | Generar procesos que joinean tablas | 2d | 2018-02-05 | 2018-02-06 | 30 | 7d | 0d |
| 33 | 2.7.2 | Generar variables | 1d | 2018-02-07 | 2018-02-07 | 32 | 7d | 0d |
| 34 | 2.7.3 | Generar clase/s | 1d | 2018-02-08 | 2018-02-08 | 33 | 7d | 0d |
| 35 | 2.7.4 | export de archivo | 1d | 2018-02-09 | 2018-02-09 | 34 | 25d |  |
| 36 | 2.7.5 | (llevar export también a TD y a Hadoop) | 1d | 2018-02-09 | 2018-02-09 | 34 | 7d | 0d |
| 37 | 2.8 | **Prueba y exploración de modelos predictivos - Iteración 2** | 5d | 2018-02-14 | 2018-02-20 |  | 7d |  |
| 38 | 2.8.1 | Definir éxito o fracaso del modelo | 5d | 2018-02-14 | 2018-02-20 | 36 | 7d | 0d |
| 39 | 2.9 | **Pase a producción interno** | 5d | 2018-02-21 | 2018-02-27 |  | 7d |  |
| 40 | 2.9.1 | Crear scripts con stored procedures apuntando a tablas productivas | 1d | 2018-02-21 | 2018-02-21 | 38 | 7d | 0d |
| 41 | 2.9.2 | Crear documentación de tablas a pasar a producción con y sin datos | 1d | 2018-02-22 | 2018-02-22 | 40 | 7d | 0d |
| 42 | 2.9.3 | crear documentos de depuración y volumen de tablas permanentes | 1d | 2018-02-23 | 2018-02-23 | 41 | 7d | 0d |
| 43 | 2.9.4 | crear documento de cadena de jobs de control m | 1d | 2018-02-26 | 2018-02-26 | 42 | 7d | 0d |
| 44 | 2.9.5 | crear documento de alertas (controles de carga/ validaciones y envío de mails) | 1d | 2018-02-27 | 2018-02-27 | 43 | 22d |  |
| 45 | 2.9.6 | export de archivo | 1d | 2018-02-27 | 2018-02-27 | 43 | 7d | 0d |
| 46 | 2.10 | **Testing** | 10d | 2018-02-28 | 2018-03-13 |  | 7d |  |
| 47 | 2.10.1 | enviar al equipo de testing stored procedures | 1d | 2018-02-28 | 2018-02-28 | 45 | 7d | 0d |
| 48 | 2.10.2 | crear casos de prueba para teradata | 1d | 2018-02-28 | 2018-02-28 | 45 | 7d | 0d |
| 49 | 2.10.3 | crear casos de prueba para R | 1d | 2018-02-28 | 2018-02-28 | 45 | 7d | 0d |
| 50 | 2.10.4 | crear casos de prueba para hadoop | 1d | 2018-02-28 | 2018-02-28 | 45 | 7d | 0d |
| 51 | 2.10.5 | testear los casos de prueba | 4d | 2018-03-01 | 2018-03-06 | 47, 48, 49, 50 | 7d | 0d |
| 52 | 2.10.6 | pruebas unitarias de scripts y SPs | 3d | 2018-03-07 | 2018-03-09 | 51 | 7d | 0d |
| 53 | 2.10.7 | pruebas integradoras de scripts y SPs | 2d | 2018-03-12 | 2018-03-13 | 52 | 7d | 0d |

| ID | WBS | Task | Type | Duration | Start | Finish | Predecessors | Total slack | Free slack |
| --- | --- | --- | --- | --- | --- | --- | --- | --- | --- |
| 54 | 2.11 | **Documentación** |  | 5d | 2018-03-14 | 2018-03-20 |  | 7d |  |
| 55 | 2.11.1 | Pensar estructura del texto/indice para documento comercial y técnico |  | 1d | 2018-03-14 | 2018-03-14 | 53 | 7d | 0d |
| 56 | 2.11.2 | Redactar documento técnico |  | 2d | 2018-03-15 | 2018-03-16 | 55 | 7d | 0d |
| 57 | 2.11.3 | Redactar documento comercial |  | 2d | 2018-03-19 | 2018-03-20 | 56 | 7d |  |
| 58 | 3 | **Pase a producción - Sourcing** |  | 0d | 2017-12-12 | 2017-12-12 |  |  |  |
| 59 | 3.1 | envío de documentos de pasaje a producción | manual | 1d | 2017-12-12 | 2017-12-12 |  |  |  |
| 60 | 3.2 | seguimiento de tareas asociadas | manual | 1d | 2017-12-12 | 2017-12-12 |  |  |  |
| 61 | 3.3 | pruebas unitarias | manual | 1d | 2017-12-12 | 2017-12-12 |  |  |  |
| 62 | 3.4 | pruebas integradoras | manual | 1d | 2017-12-12 | 2017-12-12 |  |  |  |
| 63 | 4 | Vacaciones Leo 1 | manual | 4.88d | 2017-12-21 | 2017-12-27 |  |  |  |
| 64 | 5 | Vacaciones Leo 2 | manual | 5.88d | 2018-01-02 | 2018-01-09 |  |  |  |
| 65 | 6 | Vacaciones Guille | manual | 6.88d | 2018-02-05 | 2018-02-15 |  |  |  |
| 66 | 7 | Vacaciones Mati | manual | 16.88d | 2018-02-10 | 2018-03-07 |  |  |  |
| 67 | 8 | Fecha Comprometida con el Negocio | manual | 1d? | 2018-04-02 | 2018-04-02 |  |  |  |
